Schedule from MS Project, 2021-09-10 to 2022-05-26, costs in ₽, A marks actual dates.

## Calendars

- Standard: Mon-Fri 08:00-12:00, 13:00-17:00; Sat-Sun off.

## Resources

| Resource | Unit | Rate | Cost per use |
| --- | --- | --- | --- |
| Microsoft Word |  |  | 10000 |
| Rational Rose |  |  |  |
| Интернет | Гб | 100 |  |
| Draw IO |  |  |  |
| Visual Studio 2019 |  |  |  |
| Богданов А.П. |  | 250 |  |
| Нейронная сеть |  |  |  |
| Рабочая станция |  |  |  |
| Тестировщик |  | 200 |  |
| Учебная литература | Книг | 1000 |  |

## Schedule

| ID | WBS | Task | Duration | Start | Finish | Predecessors | Complete | Actual finish | Resources | Work | Actual work | Cost | Actual cost |
| --- | --- | --- | --- | --- | --- | --- | --- | --- | --- | --- | --- | --- | --- |
| 1 | 1 | **Диплом** | 185d | 2021-09-10 A | 2022-05-26 |  | 100% | 2022-05-25 |  | 1472h | 1472h | 450,300 | 450,300 |
| 2 | 1.1 | Разработка ТЗ | 10d | 2021-09-10 A | 2021-09-23 A |  | 100% |  | Microsoft Word; Богданов А.П. | 80h | 80h | 30,000 | 30,000 |
| 3 | 1.2 | Анализ отечественных и зарубежных аналогов | 5d | 2021-09-24 A | 2021-09-30 A | 2 | 100% |  | Microsoft Word; Богданов А.П.; Интернет [1 Гб] | 40h | 40h | 20,100 | 20,100 |
| 4 | 1.3 | Анализ предметной области | 4d | 2021-10-01 A | 2021-10-06 A | 3 | 100% |  | Microsoft Word; Богданов А.П.; Интернет [1 Гб]; Учебная литература [1 Книг] | 32h | 32h | 19,100 | 19,100 |
| 5 | 1.4 | Выбор технологии, среды и языка программирования | 5d | 2021-10-07 A | 2021-10-13 A | 4 | 100% |  | Microsoft Word; Богданов А.П.; Интернет [1 Гб]; Учебная литература [1 Книг] | 40h | 40h | 21,100 | 21,100 |
| 6 | 1.5 | Анализ процесса обработки информации, выбор структур данных для ее хранения, выбор методов и алгоритмов решения | 5d | 2021-10-14 A | 2021-10-20 A | 5 | 100% |  | Microsoft Word; Богданов А.П.; Интернет [1 Гб]; Учебная литература [1 Книг] | 40h | 40h | 21,100 | 21,100 |
| 7 | 1.6 | **Разработка спецификации и архитектуры ПО** | 42d | 2021-10-21 A | 2021-12-17 A | 6 | 100% |  |  | 336h | 336h | 90,600 | 90,600 |
| 8 | 1.6.1 | Построение ДВИ | 6d | 2021-10-21 A | 2021-10-28 A |  | 100% |  | Rational Rose; Богданов А.П.; Интернет [1 Гб]; Учебная литература [1 Книг] | 48h | 48h | 13,100 | 13,100 |
| 9 | 1.6.2 | Построение контекстной диаграммы классов | 5d | 2021-10-29 A | 2021-11-04 A | 8 | 100% |  | Rational Rose; Богданов А.П.; Интернет [1 Гб]; Учебная литература [1 Книг] | 40h | 40h | 11,100 | 11,100 |
| 10 | 1.6.3 | Построение диаграмм последовательности системы для каждого варианта использования | 7d | 2021-11-05 A | 2021-11-15 A | 9 | 100% |  | Rational Rose; Богданов А.П.; Интернет [1 Гб]; Учебная литература [1 Книг] | 56h | 56h | 15,100 | 15,100 |
| 11 | 1.6.4 | Построение диаграмм деятельностей сценариев вариантов использования | 4d | 2021-11-16 A | 2021-11-19 A | 10 | 100% |  | Rational Rose; Богданов А.П.; Интернет [1 Гб]; Учебная литература [1 Книг] | 32h | 32h | 9,100 | 9,100 |
| 12 | 1.6.5 | Проектирование структур данных и построение диаграмм отношений компонентов данных | 15d | 2021-11-22 A | 2021-12-10 A | 11 | 100% |  | Rational Rose; Богданов А.П.; Интернет [1 Гб]; Учебная литература [1 Книг] | 120h | 120h | 31,100 | 31,100 |
| 13 | 1.6.6 | Доработка разработанных диаграмм | 5d | 2021-12-13 A | 2021-12-17 A | 12 | 100% |  | Rational Rose; Богданов А.П.; Интернет [1 Гб]; Учебная литература [1 Книг] | 40h | 40h | 11,100 | 11,100 |
| 14 | 1.7 | **Проектирование системы и пользовательского интерфейса** | 23d | 2021-12-20 A | 2022-01-19 A | 7 | 100% |  |  | 184h | 184h | 48,200 | 48,200 |
| 15 | 1.7.1 | Проектирование системы | 15d | 2021-12-20 A | 2022-01-07 A |  | 100% |  | Draw IO; Богданов А.П.; Интернет [1 Гб]; Учебная литература [1 Книг] | 120h | 120h | 31,100 | 31,100 |
| 16 | 1.7.2 | Проектирование пользовательского интерфейса | 8d | 2022-01-10 A | 2022-01-19 A | 15 | 100% |  | Draw IO; Богданов А.П.; Учебная литература [1 Книг]; Интернет [1 Гб] | 64h | 64h | 17,100 | 17,100 |
| 17 | 1.8 | **Разработка программного обеспечения** | 85d | 2022-01-20 A | 2022-05-18 A | 14 | 100% |  |  | 680h | 680h | 192,000 | 192,000 |
| 18 | 1.8.1 | **Разработка пакета Presentation Layer** | 27d | 2022-01-20 A | 2022-02-25 A |  | 100% |  |  | 216h | 216h | 67,300 | 67,300 |
| 19 | 1.8.1.1 | Разработка пакета ViewModels | 5d | 2022-01-20 A | 2022-01-26 A |  | 100% |  | Visual Studio 2019; Богданов А.П.; Интернет [1 Гб]; Учебная литература [1 Книг]; Рабочая станция | 40h | 40h | 11,100 | 11,100 |
| 20 | 1.8.1.2 | Разработка пакета Views | 7d | 2022-01-27 A | 2022-02-04 A | 19 | 100% |  | Visual Studio 2019; Богданов А.П.; Интернет [1 Гб]; Учебная литература [1 Книг]; Рабочая станция | 56h | 56h | 15,100 | 15,100 |
| 21 | 1.8.1.3 | Разработка пакета Models | 15d | 2022-02-07 A | 2022-02-25 A | 20 | 100% |  | Microsoft Word; Visual Studio 2019; Богданов А.П.; Интернет [1 Гб]; Учебная литература [1 Книг]; Рабочая станция | 120h | 120h | 41,100 | 41,100 |
| 22 | 1.8.2 | **Разработка пакета Business Layer** | 17d | 2022-02-28 A | 2022-03-22 A | 18 | 100% |  |  | 136h | 136h | 36,200 | 36,200 |
| 23 | 1.8.2.1 | Разработка пакета Detection | 7d | 2022-02-28 A | 2022-03-08 A |  | 100% |  | Visual Studio 2019; Богданов А.П.; Интернет [1 Гб]; Рабочая станция; Учебная литература [1 Книг]; Нейронная сеть | 56h | 56h | 15,100 | 15,100 |
| 24 | 1.8.2.2 | Разработка пакета Services | 10d | 2022-03-09 A | 2022-03-22 A | 23 | 100% |  | Visual Studio 2019; Богданов А.П.; Интернет [1 Гб]; Рабочая станция; Учебная литература [1 Книг] | 80h | 80h | 21,100 | 21,100 |

| ID | WBS | Task | Duration | Start | Finish | Predecessors | Complete | Resources | Work | Actual work | Cost | Actual cost |
| --- | --- | --- | --- | --- | --- | --- | --- | --- | --- | --- | --- | --- |
| 25 | 1.8.3 | **Разработка пакета DataLayer** | 26d | 2022-03-23 A | 2022-04-27 A | 22 | 100% |  | 208h | 208h | 55,300 | 55,300 |
| 26 | 1.8.3.1 | Разработка пакета Reading | 5d | 2022-03-23 A | 2022-03-29 A |  | 100% | Visual Studio 2019; Богданов А.П.; Интернет [1 Гб]; Рабочая станция; Учебная литература [1 Книг] | 40h | 40h | 11,100 | 11,100 |
| 27 | 1.8.3.2 | Разработка пакета DataBase Sending | 10d | 2022-03-30 A | 2022-04-12 A | 26 | 100% | Visual Studio 2019; Богданов А.П.; Интернет [1 Гб]; Рабочая станция; Учебная литература [1 Книг] | 80h | 80h | 21,100 | 21,100 |
| 28 | 1.8.3.3 | Разработка пакета Teams Sending | 11d | 2022-04-13 A | 2022-04-27 A | 27 | 100% | Visual Studio 2019; Богданов А.П.; Интернет [1 Гб]; Рабочая станция; Учебная литература [1 Книг] | 88h | 88h | 23,100 | 23,100 |
| 29 | 1.8.4 | **Разработка пакета CrossLayer** | 15d | 2022-04-28 A | 2022-05-18 A | 25 | 100% |  | 120h | 120h | 33,200 | 33,200 |
| 30 | 1.8.4.1 | Разработка пакета Extensions | 4d | 2022-04-28 A | 2022-05-03 A |  | 100% | Visual Studio 2019; Богданов А.П.; Интернет [1 Гб]; Рабочая станция; Учебная литература [1 Книг] | 32h | 32h | 9,100 | 9,100 |
| 31 | 1.8.4.2 | Разработка пакета Data | 5d | 2022-05-04 A | 2022-05-10 A | 30 | 100% | Visual Studio 2019; Богданов А.П.; Интернет [1 Гб]; Рабочая станция; Учебная литература [1 Книг] | 40h | 40h | 11,100 | 11,100 |
| 32 | 1.8.4.3 | Разработка пакета Exceptions | 6d | 2022-05-11 A | 2022-05-18 A | 31 | 100% | Visual Studio 2019; Богданов А.П.; Рабочая станция; Учебная литература [1 Книг] | 48h | 48h | 13,000 | 13,000 |
| 33 | 1.9 | Тестирование | 5d | 2022-05-19 A | 2022-05-25 A | 17 | 100% | Интернет [1 Гб]; Нейронная сеть; Рабочая станция; Тестировщик | 40h | 40h | 8,100 | 8,100 |
